# HMI_SDK

Schedule from GanttProject, 2017-05-16 to 2017-07-26.

## Calendars

- Project calendar: Mon-Fri working; Sat-Sun off. Exceptions (off unless hours are given): 2017-05-28, 2017-05-30.

## Schedule

| ID | WBS | Task | Duration | Start | Finish | 人员 |
| --- | --- | --- | --- | --- | --- | --- |
| 1 | 1 | 计划达成目标及风险预估 | 2d | 2017-05-17 | 2017-05-18 | 范强 |
| 2 | 2 | 计划评审 | 1d | 2017-05-18 | 2017-05-18 | 范强、潘亮、jeff、Brandon |
| 3 | 3 | 调查替换方案可行性 | 3d | 2017-05-22 | 2017-05-24 | 范强 |
| 4 | 4 | 替换方案评审 | 1d | 2017-05-24 | 2017-05-24 | 范强、潘亮、jeff |
| 5 | 5 | 开发环境配置 | 3d | 2017-05-19 | 2017-05-23 | 王顺文 |
| 6 | 6 | **可行** | 51d | 2017-05-16 | 2017-07-26 |  |
| 7 | 6.1 | 重构需求文档编写 | 1d | 2017-05-25 | 2017-05-25 | 范强 |
| 8 | 6.2 | 重构需求文档评审 | 1d | 2017-05-25 | 2017-05-25 | 范强 |
| 9 | 6.3 | **SDK编码实现** | 9d | 2017-05-26 | 2017-06-08 | 范强 |
| 10 | 6.3.1 | Win32编译环境替换QT相关实现 | 2d | 2017-05-26 | 2017-05-29 | 范强、王顺文 |
| 11 | 6.3.2 | 提取并封装SDK对外暴露接口 | 3d | 2017-05-31 | 2017-06-02 | 范强 |
| 12 | 6.3.3 | 实现Wince编译环境移植 | 1d | 2017-06-05 | 2017-06-05 | 范强 |
| 13 | 6.3.4 | 实现Ubuntu编译环境移植 | 1d | 2017-06-06 | 2017-06-06 | 范强 |
| 14 | 6.3.5 | 实现Android平台编译环境移植 | 2d | 2017-06-07 | 2017-06-08 | 范强 |
| 15 | 6.4 | SDK测试工具编写 | 4d | 2017-06-09 | 2017-06-14 | 范强 |
| 16 | 6.5 | **多平台联调** | 4d | 2017-06-15 | 2017-06-20 | 范强 |
| 17 | 6.5.1 | Win32平台App注册、退出、基本Show命令通过 | 1d | 2017-06-15 | 2017-06-15 | 范强 |
| 18 | 6.5.2 | Wince平台App注册、退出、基本Show命令通过 | 1d | 2017-06-16 | 2017-06-16 | 范强 |
| 19 | 6.5.3 | Ubuntu平台App注册、退出、基本Show命令通过 | 1d | 2017-06-19 | 2017-06-19 | 范强 |
| 20 | 6.5.4 | Android平台App注册、退出、基本Show命令通过 | 1d | 2017-06-20 | 2017-06-20 | 范强 |
| 21 | 6.6 | SDK接口说明文档编写 | 5d | 2017-06-21 | 2017-06-27 | 范强 |
| 22 | 6.7 | 接口文档评审 | 1d | 2017-06-28 | 2017-06-28 | 范强、潘亮、jeff |
| 23 | 6.8 | **测试** | 6d | 2017-05-16 | 2017-05-23 | 张克敏、echo |
| 24 | 6.8.1 | 测试计划编写 | 1d | 2017-05-23 | 2017-05-23 |  |
| 25 | 6.8.2 | 测试计划评审 | 1d | 2017-05-16 | 2017-05-16 |  |
| 26 | 6.9 | Bug修复 | 20d | 2017-06-29 | 2017-07-26 | 范强 |

Notes:
- 3: 1.调查QT依赖部分是否有能去掉的部分，去掉后是否有影响 / 2.确定定时器、信号槽、库导出函数加载、QDir、QDialog等QT相关替换实现方案 / 备注: 1.调查QT依赖部分是否有能去掉的部分，去掉后是否有影响 2.确定定时器、信号槽、库导出函数加载、QDir、QDialog等QT相关替换实现方案
- 5: 1.主要有win32 wince ubuntu android编译环境依赖编译工具链及编译脚本生成 / 2.建立git代码库 / 3.各平台必要的配置说明，如何使用 / 各平台测试环境的系统版本暂定为 / win7 / wince6.0 / ubuntu16 / android4.3 / 备注: 主要有win32 wince ubuntu android编译环境依赖编译工具链
- 15: 修改原有UI模块实现调用SDK测试 / 备注: 修改原有UI模块实现调用SDK测试
- 16: 手机端SPT、SDL、HMI联调 / 备注: 手机端SPT、SDL、HMI联调
- 24: 包括编写评审及修改完成 / 备注: 包括编写评审及修改完成

| ID | WBS | Task | Duration | Start | Finish | 人员 | 备注 |
| --- | --- | --- | --- | --- | --- | --- | --- |
| 27 | 7 | **不可行，继续使用QT依赖库** | 49d | 2017-05-16 | 2017-07-24 |  |  |
| 28 | 7.1 | 重构需求文档编写 | 1d | 2017-05-25 | 2017-05-25 | 范强 |  |
| 29 | 7.2 | 重构需求文档评审 | 1d | 2017-05-25 | 2017-05-25 | 范强 |  |
| 30 | 7.3 | **SDK编码实现** | 7d | 2017-05-26 | 2017-06-06 | 范强 |  |
| 31 | 7.3.1 | 提取并封装SDK对外暴露接口 | 3d | 2017-05-26 | 2017-05-31 | 范强 |  |
| 32 | 7.3.2 | 实现Wince编译环境移植 | 1d | 2017-06-01 | 2017-06-01 | 范强 |  |
| 33 | 7.3.3 | 实现Ubuntu编译环境移植 | 1d | 2017-06-02 | 2017-06-02 | 范强 |  |
| 34 | 7.3.4 | 实现Android平台编译环境移植 | 2d | 2017-06-05 | 2017-06-06 | 范强 |  |
| 35 | 7.4 | SDK测试工具编写 | 4d | 2017-06-07 | 2017-06-12 | 范强 | 修改原有UI模块实现调用SDK测试 |
| 36 | 7.5 | **多平台联调** | 4d | 2017-06-13 | 2017-06-16 | 范强 | 手机端SPT、SDL、HMI联调 |
| 37 | 7.5.1 | Win32平台App注册、退出、基本Show命令通过 | 1d | 2017-06-13 | 2017-06-13 | 范强 |  |
| 38 | 7.5.2 | Wince平台App注册、退出、基本Show命令通过 | 1d | 2017-06-14 | 2017-06-14 | 范强 |  |
| 39 | 7.5.3 | Ubuntu平台App注册、退出、基本Show命令通过 | 1d | 2017-06-15 | 2017-06-15 | 范强 |  |
| 40 | 7.5.4 | Android平台App注册、退出、基本Show命令通过 | 1d | 2017-06-16 | 2017-06-16 | 范强 |  |
| 41 | 7.6 | SDK接口说明文档编写 | 5d | 2017-06-19 | 2017-06-23 | 范强 |  |
| 42 | 7.7 | 接口文档评审 | 1d | 2017-06-26 | 2017-06-26 | 范强、潘亮、jeff |  |
| 43 | 7.8 | **测试** | 6d | 2017-05-16 | 2017-05-23 | 张克敏、echo |  |
| 44 | 7.8.1 | 测试计划编写 | 1d | 2017-05-23 | 2017-05-23 |  | 包括编写评审及修改完成 |
| 45 | 7.8.2 | 测试计划评审 | 1d | 2017-05-16 | 2017-05-16 |  |  |
| 46 | 7.9 | Bug修复 | 20d | 2017-06-27 | 2017-07-24 | 范强 |  |

Notes:
- 35: 修改原有UI模块实现调用SDK测试
- 36: 手机端SPT、SDL、HMI联调
- 44: 包括编写评审及修改完成
